# Simple Project Plan

How a schedule from MS Project changed from version to version. A marks actual dates.

## Version 1 (saved 2016-09-25, file Cronograma.mpp)

Note of the change: Criação do cronograma

| ID | WBS | Task | Duration | Start | Finish | Predecessors | Complete | Total float |
| --- | --- | --- | --- | --- | --- | --- | --- | --- |
| 1 | 1 | **Desenvolvimento Front End** | 5d | 2016-09-23 A | 2016-09-29 |  | 75% |  |
| 2 |  | Home Super Admin | 2d | 2016-09-23 A | 2016-09-26 |  | 44% | 36d |
| 3 |  | Login | 3d | 2016-09-27 | 2016-09-29 | 2 |  | 36d |
| 4 |  | Assinatura | 0d | 2016-09-30 | 2016-09-30 | 3 |  |  |
| 5 |  | Cadastrar Crédito Cliente | 1d | 2016-09-23 A | 2016-09-23 |  | 88% |  |
| 6 |  | Relatório Vendas | 1d | 2016-09-23 A | 2016-09-23 |  | 88% |  |
| 7 |  | Venda | 1d | 2016-09-23 A | 2016-09-23 |  | 88% |  |
| 8 |  | Home Funcionário | 1d | 2016-09-23 A | 2016-09-23 |  | 88% |  |
| 9 |  | Home Gerente | 1d | 2016-09-23 A | 2016-09-23 |  | 88% |  |
| 10 |  | Relatório Cliente | 1d | 2016-09-23 A | 2016-09-23 |  | 88% |  |
| 11 |  | Cadastro Rede | 1d | 2016-09-23 A | 2016-09-23 |  | 88% |  |
| 12 |  | Caixa Final | 1d | 2016-09-23 A | 2016-09-23 |  | 88% |  |
| 13 |  | Estoque | 1d | 2016-09-23 A | 2016-09-23 |  | 88% |  |
| 14 |  | Relatório Medicamento | 1d | 2016-09-23 A | 2016-09-23 |  | 88% |  |
| 15 |  | Listar Medicamentos | 1d | 2016-09-23 A | 2016-09-23 |  | 88% |  |
| 16 |  | Listar Funcionários | 1d | 2016-09-23 A | 2016-09-23 |  | 88% |  |
| 17 |  | Listar Lojas | 1d | 2016-09-23 A | 2016-09-23 |  | 88% |  |
| 18 |  | Cadastrar Medicamentos | 1d | 2016-09-23 A | 2016-09-23 |  | 88% |  |
| 19 |  | Cadastrar Funcionário Admin | 1d | 2016-09-23 A | 2016-09-23 |  | 88% |  |
| 20 |  | Cadastrar Fornecedor | 1d | 2016-09-23 A | 2016-09-23 |  | 88% |  |
| 21 |  | Cadastrar Loja | 1d | 2016-09-23 A | 2016-09-23 |  | 88% |  |
| 22 |  | Cadastrar Cliente | 1d | 2016-09-23 A | 2016-09-23 |  | 88% |  |
| 23 |  | Cadastrar Cliente Admin | 1d | 2016-09-23 A | 2016-09-23 |  | 88% |  |
| 24 |  | Cadastrar Funcionário | 1d | 2016-09-23 A | 2016-09-23 |  | 88% |  |
| 25 |  | Cadastrar Tipo | 1d | 2016-09-23 A | 2016-09-23 |  | 88% |  |
| 26 |  | Pagina Institucional - Index | 1d | 2016-09-23 A | 2016-09-23 |  | 88% |  |
| 27 | 2 | **Cronograma** | 2d | 2016-09-23 | 2016-09-25 |  | 100% |  |
| 28 |  | Criar Cronograma | 3d | 2016-09-30 A | 2016-10-04 A | 4 | 100% |  |
| 29 | 3 | **Desenvolvimento** | 36d | 2016-09-30 | 2016-11-18 |  |  |  |
| 31 |  | Tarefa 7 | 2d | 2016-09-30 | 2016-10-03 |  |  |  |
| 32 |  | Tarefa 8 | 1d | 2016-09-30 | 2016-09-30 |  |  |  |

## Version 2 (saved 2016-09-25, file Cronograma.mpp)

Note of the change: Alterações

Last finish stays 2016-11-18. Complete tasks 1 → 9.

Added:

| ID | Task | Duration | Start | Finish | Resources |
| --- | --- | --- | --- | --- | --- |
| 33 | **Documentação** | 36d | 2016-09-30 | 2016-11-18 |  |
| 34 | Ata | 2d | 2016-09-23 A | 2016-09-26 | Gustavo |
| 35 | Status Report | 2d | 2016-09-23 A | 2016-09-26 | Gustavo |
| 36 | Sprint Burn Down | 6d | 2016-09-23 A | 2016-09-30 | Pedro |

Changed:

| ID | Task | Start | Finish | Duration | Complete | Total float | Other |
| --- | --- | --- | --- | --- | --- | --- | --- |
| 1 | **Desenvolvimento Front End** |  |  |  | 75% → 79% |  |  |
| 2 | Home Super Admin |  |  |  | 44% → 35% | 36d → 39d | resources none → Marcos |
| 3 | Login | 2016-09-27 A | 2016-09-29 A |  | 0% → 100% | 36d → none | resources none → Luis |
| 4 | Assinatura |  |  |  |  |  | resources none → Gustavo |
| 5 | Cadastrar Crédito Cliente |  | 2016-09-23 → 2016-09-26 A (+3d) | 1d → 1.18d | 88% → 100% |  | resources none → Julio |
| 6 | Relatório Vendas |  | 2016-09-23 → 2016-09-26 (+3d) | 1d → 1.18d | 88% → 70% |  | resources none → Everton |
| 7 | Venda |  | 2016-09-23 → 2016-09-26 (+3d) | 1d → 1.18d | 88% → 70% |  | resources none → Luis Mauro |
| 8 | Home Funcionário |  | 2016-09-23 → 2016-09-26 (+3d) | 1d → 1.18d | 88% → 70% |  | resources none → Pedro |
| 9 | Home Gerente |  | 2016-09-23 → 2016-09-26 (+3d) | 1d → 1.18d | 88% → 70% |  | resources none → Gustavo |
| 10 | Relatório Cliente |  | 2016-09-23 → 2016-09-26 A (+3d) | 1d → 1.18d | 88% → 100% |  | resources none → Julio |
| 11 | Cadastro Rede |  | 2016-09-23 → 2016-09-26 (+3d) | 1d → 1.18d | 88% → 70% |  | resources none → Julio |
| 12 | Caixa Final |  | 2016-09-23 → 2016-09-26 (+3d) | 1d → 1.18d | 88% → 70% |  | resources none → Everton |
| 13 | Estoque |  | 2016-09-23 → 2016-09-26 (+3d) | 1d → 1.18d | 88% → 70% |  | resources none → Gustavo |
| 14 | Relatório Medicamento |  | 2016-09-23 → 2016-09-26 (+3d) | 1d → 1.18d | 88% → 70% |  | resources none → Pedro |
| 15 | Listar Medicamentos |  | 2016-09-23 → 2016-09-26 (+3d) | 1d → 1.18d | 88% → 70% |  | resources none → Luis |
| 16 | Listar Funcionários |  | 2016-09-23 → 2016-09-26 (+3d) | 1d → 1.18d | 88% → 70% |  | resources none → Everton |
| 17 | Listar Lojas |  | 2016-09-23 → 2016-09-26 A (+3d) | 1d → 1.18d | 88% → 100% |  | resources none → Julio |
| 18 | Cadastrar Medicamentos |  | 2016-09-23 → 2016-09-26 A (+3d) | 1d → 1.18d | 88% → 100% |  | resources none → Julio |
| 19 | Cadastrar Funcionário Admin |  | 2016-09-23 → 2016-09-26 (+3d) | 1d → 1.18d | 88% → 70% |  | resources none → Everton |
| 20 | Cadastrar Fornecedor |  | 2016-09-23 → 2016-09-26 A (+3d) | 1d → 1.18d | 88% → 100% |  | resources none → Julio |
| 21 | Cadastrar Loja |  | 2016-09-23 → 2016-09-26 A (+3d) | 1d → 1.18d | 88% → 100% |  | resources none → Julio |
| 22 | Cadastrar Cliente |  | 2016-09-23 → 2016-09-26 (+3d) | 1d → 1.18d | 88% → 70% |  | resources none → Marcos |
| 23 | Cadastrar Cliente Admin |  | 2016-09-23 → 2016-09-26 A (+3d) | 1d → 1.18d | 88% → 100% |  | resources none → Julio |
| 24 | Cadastrar Funcionário |  | 2016-09-23 → 2016-09-26 (+3d) | 1d → 1.18d | 88% → 70% |  | resources none → Julio |
| 25 | Cadastrar Tipo |  | 2016-09-23 → 2016-09-26 (+3d) | 1d → 1.18d | 88% → 70% |  | resources none → Pedro |
| 26 | Pagina Institucional - Index |  | 2016-09-23 → 2016-09-26 (+3d) | 1d → 1.18d | 88% → 70% |  | resources none → Marcos |
| 28 | Criar Cronograma |  |  |  |  |  | resources none → Luis |

## Version 3 (saved 2016-09-27, file Cronograma.mpp)

Note of the change: Atualização do Cronograma

Last finish stays 2016-11-18.

Added:

| ID | Task | Duration | Start | Finish |
| --- | --- | --- | --- | --- |
| 34 | Home Super Admin | 3d | 2016-10-14 | 2016-10-18 |
| 37 | Cadastrar Crédito Cliente | 1d | 2016-09-30 | 2016-09-30 |
| 38 | Relatório Vendas | 1d | 2016-09-30 | 2016-09-30 |
| 39 | Venda | 1d | 2016-09-30 | 2016-09-30 |
| 40 | Home Funcionário | 1d | 2016-09-30 | 2016-09-30 |
| 41 | Home Gerente | 1d | 2016-09-30 | 2016-09-30 |
| 42 | Relatório Cliente | 1d | 2016-09-30 | 2016-09-30 |
| 43 | Cadastro Rede | 1d | 2016-09-30 | 2016-09-30 |
| 44 | Caixa Final | 1d | 2016-09-30 | 2016-09-30 |
| 45 | Estoque | 1d | 2016-09-30 | 2016-09-30 |
| 46 | Relatório Medicamento | 1d | 2016-09-30 | 2016-09-30 |
| 47 | Listar Medicamentos | 1d | 2016-09-30 | 2016-09-30 |
| 48 | Listar Funcionários | 1d | 2016-09-30 | 2016-09-30 |
| 49 | Listar Lojas | 1d | 2016-09-30 | 2016-09-30 |
| 50 | Cadastrar Medicamentos | 1d | 2016-09-30 | 2016-09-30 |
| 51 | Cadastrar Funcionário Admin | 1d | 2016-09-30 | 2016-09-30 |
| 52 | Cadastrar Fornecedor | 1d | 2016-09-30 | 2016-09-30 |
| 53 | Cadastrar Loja | 1d | 2016-09-30 | 2016-09-30 |
| 54 | Cadastrar Cliente | 1d | 2016-09-30 | 2016-09-30 |
| 55 | Cadastrar Cliente Admin | 1d | 2016-09-30 | 2016-09-30 |
| 56 | Cadastrar Funcionário | 1d | 2016-09-30 | 2016-09-30 |
| 57 | Cadastrar Tipo | 1d | 2016-09-30 | 2016-09-30 |
| 58 | Pagina Institucional - Index | 1d | 2016-09-30 | 2016-09-30 |

Changed:

| ID | Task | Other |
| --- | --- | --- |
| 35 | Login | was named Tarefa 7 |
| 36 | Assinatura | was named Tarefa 8 |

## Version 4 (saved 2016-10-01, file Cronograma.mpp)

Note of the change: Atualização do cronograma

Last finish stays 2016-11-18. Complete tasks 9 → 8.

Removed: 27 Cronograma; 28 Criar Cronograma; 29 Documentação; 30 Ata; 31 Status Report; 32 Sprint Burn Down

Changed:

| ID | Task | Start | Finish | Duration | Other |
| --- | --- | --- | --- | --- | --- |
| 27 | **Desenvolvimento Back End** |  |  |  | was named Desenvolvimento |
| 28 | Home Super Admin | 2016-10-14 → 2016-10-06 (-8d) | 2016-10-18 → 2016-10-09 (-9d) |  | resources none → Marcos |
| 29 | Login | 2016-09-30 → 2016-10-02 (+2d) |  |  | resources none → Marcos |
| 30 | Assinatura | 2016-09-30 → 2016-10-03 (+3d) | 2016-09-30 → 2016-10-06 (+6d) | 1d → 4d | resources none → Marcos |
| 31 | Cadastrar Crédito Cliente | 2016-09-30 → 2016-10-10 (+10d) | 2016-09-30 → 2016-10-16 (+16d) | 1d → 6d | resources none → Everton |
| 32 | Relatório Vendas | 2016-09-30 → 2016-10-10 (+10d) | 2016-09-30 → 2016-10-16 (+16d) | 1d → 6d | resources none → Gustavo |
| 33 | Venda | 2016-09-30 → 2016-10-10 (+10d) | 2016-09-30 → 2016-10-16 (+16d) | 1d → 6d | resources none → Julio |
| 34 | Home Funcionário | 2016-09-30 → 2016-10-06 (+6d) | 2016-09-30 → 2016-10-09 (+9d) | 1d → 3d | resources none → Marcos |
| 35 | Home Gerente | 2016-09-30 → 2016-10-06 (+6d) | 2016-09-30 → 2016-10-09 (+9d) | 1d → 3d | resources none → Marcos |
| 36 | Relatório Cliente | 2016-09-30 → 2016-10-10 (+10d) | 2016-09-30 → 2016-10-16 (+16d) | 1d → 6d | resources none → Luis |
| 37 | Cadastro Rede | 2016-09-30 → 2016-10-10 (+10d) | 2016-09-30 → 2016-10-16 (+16d) | 1d → 6d | resources none → Luis Mauro |
| 38 | Caixa Final | 2016-09-30 → 2016-10-10 (+10d) | 2016-09-30 → 2016-10-16 (+16d) | 1d → 6d | resources none → Pedro |
| 39 | Estoque | 2016-09-30 → 2016-10-17 (+17d) | 2016-09-30 → 2016-10-20 (+20d) | 1d → 4d | resources none → Luis Mauro |
| 40 | Relatório Medicamento | 2016-09-30 → 2016-10-17 (+17d) | 2016-09-30 → 2016-10-20 (+20d) | 1d → 4d | resources none → Marcos |
| 41 | Listar Medicamentos | 2016-09-30 → 2016-10-20 (+20d) | 2016-09-30 → 2016-10-23 (+23d) | 1d → 3d | resources none → Marcos |
| 42 | Listar Funcionários | 2016-09-30 → 2016-10-20 (+20d) | 2016-09-30 → 2016-10-23 (+23d) | 1d → 3d | resources none → Luis Mauro |
| 43 | Listar Lojas | 2016-09-30 → 2016-10-23 (+23d) | 2016-09-30 → 2016-10-25 (+25d) | 1d → 3d | resources none → Luis Mauro |
| 44 | Cadastrar Medicamentos | 2016-09-30 → 2016-10-23 (+23d) | 2016-09-30 → 2016-10-25 (+25d) | 1d → 3d | resources none → Marcos |
| 45 | Cadastrar Funcionário Admin | 2016-09-30 → 2016-10-26 (+26d) | 2016-09-30 → 2016-10-30 (+30d) | 1d → 4d | resources none → Marcos |
| 46 | Cadastrar Fornecedor | 2016-09-30 → 2016-10-26 (+26d) | 2016-09-30 → 2016-10-30 (+30d) | 1d → 4d | resources none → Luis Mauro |
| 47 | Cadastrar Loja | 2016-09-30 → 2016-11-02 (+33d) | 2016-09-30 → 2016-11-06 (+37d) | 1d → 4d | resources none → Marcos |
| 48 | Cadastrar Cliente | 2016-09-30 → 2016-10-03 (+3d) | 2016-09-30 → 2016-10-09 (+9d) | 1d → 6d | resources none → Everton |
| 49 | Cadastrar Cliente Admin | 2016-09-30 → 2016-10-03 (+3d) | 2016-09-30 → 2016-10-09 (+9d) | 1d → 6d | resources none → Gustavo |
| 50 | Cadastrar Funcionário | 2016-09-30 → 2016-10-03 (+3d) | 2016-09-30 → 2016-10-09 (+9d) | 1d → 6d | resources none → Julio |
| 51 | Cadastrar Tipo | 2016-09-30 → 2016-10-03 (+3d) | 2016-09-30 → 2016-10-09 (+9d) | 1d → 6d | resources none → Luis |
| 52 | Pagina Institucional - Index | 2016-09-30 → 2016-11-08 (+39d) | 2016-09-30 → 2016-11-11 (+42d) | 1d → 4d | resources none → Marcos |

## Version 5 (saved 2016-10-28, file Cronograma28-10-2016.mpp)

Note of the change: Atualizações cronograma, burn down e status report

Last finish 2016-11-18 → 2016-11-23 (+5d). Complete tasks 8 → 25.

Changed:

| ID | Task | Start | Finish | Duration | Complete | Total float | Other |
| --- | --- | --- | --- | --- | --- | --- | --- |
| 1 | **Desenvolvimento Front End** |  |  |  | 79% → 100% |  | baseline start none → 2016-09-23; baseline finish none → 2016-09-29 |
| 2 | Home Super Admin |  | 2016-09-26 A |  | 35% → 100% | 39d → none | baseline start none → 2016-09-23; baseline finish none → 2016-09-26 |
| 3 | Login |  |  |  |  |  | baseline start none → 2016-09-27; baseline finish none → 2016-09-29 |
| 4 | Assinatura | 2016-09-30 A | 2016-09-30 A |  | 0% → 100% |  | baseline start none → 2016-09-30; baseline finish none → 2016-09-30 |
| 5 | Cadastrar Crédito Cliente |  |  |  |  |  | baseline start none → 2016-09-23; baseline finish none → 2016-09-26 |
| 6 | Relatório Vendas |  | 2016-09-26 A |  | 70% → 100% |  | baseline start none → 2016-09-23; baseline finish none → 2016-09-26 |
| 7 | Venda |  | 2016-09-26 A |  | 70% → 100% |  | baseline start none → 2016-09-23; baseline finish none → 2016-09-26 |
| 8 | Home Funcionário |  | 2016-09-26 A |  | 70% → 100% |  | baseline start none → 2016-09-23; baseline finish none → 2016-09-26 |
| 9 | Home Gerente |  | 2016-09-26 A |  | 70% → 100% |  | baseline start none → 2016-09-23; baseline finish none → 2016-09-26 |
| 10 | Relatório Cliente |  |  |  |  |  | baseline start none → 2016-09-23; baseline finish none → 2016-09-26 |
| 11 | Cadastro Rede |  | 2016-09-26 A |  | 70% → 100% |  | baseline start none → 2016-09-23; baseline finish none → 2016-09-26 |
| 12 | Caixa Final |  | 2016-09-26 A |  | 70% → 100% |  | baseline start none → 2016-09-23; baseline finish none → 2016-09-26 |
| 13 | Estoque |  | 2016-09-26 A |  | 70% → 100% |  | baseline start none → 2016-09-23; baseline finish none → 2016-09-26 |
| 14 | Relatório Medicamento |  | 2016-09-26 A |  | 70% → 100% |  | baseline start none → 2016-09-23; baseline finish none → 2016-09-26 |
| 15 | Listar Medicamentos |  | 2016-09-26 A |  | 70% → 100% |  | baseline start none → 2016-09-23; baseline finish none → 2016-09-26 |
| 16 | Listar Funcionários |  | 2016-09-26 A |  | 70% → 100% |  | baseline start none → 2016-09-23; baseline finish none → 2016-09-26 |
| 17 | Listar Lojas |  |  |  |  |  | baseline start none → 2016-09-23; baseline finish none → 2016-09-26 |
| 18 | Cadastrar Medicamentos |  |  |  |  |  | baseline start none → 2016-09-23; baseline finish none → 2016-09-26 |
| 19 | Cadastrar Funcionário Admin |  | 2016-09-26 A |  | 70% → 100% |  | baseline start none → 2016-09-23; baseline finish none → 2016-09-26 |
| 20 | Cadastrar Fornecedor |  |  |  |  |  | baseline start none → 2016-09-23; baseline finish none → 2016-09-26 |
| 21 | Cadastrar Loja |  |  |  |  |  | baseline start none → 2016-09-23; baseline finish none → 2016-09-26 |
| 22 | Cadastrar Cliente |  | 2016-09-26 A |  | 70% → 100% |  | baseline start none → 2016-09-23; baseline finish none → 2016-09-26 |
| 23 | Cadastrar Cliente Admin |  |  |  |  |  | baseline start none → 2016-09-23; baseline finish none → 2016-09-26 |
| 24 | Cadastrar Funcionário |  | 2016-09-26 A |  | 70% → 100% |  | baseline start none → 2016-09-23; baseline finish none → 2016-09-26 |
| 25 | Cadastrar Tipo |  | 2016-09-26 A |  | 70% → 100% |  | baseline start none → 2016-09-23; baseline finish none → 2016-09-26 |
| 26 | Pagina Institucional - Index |  | 2016-09-26 A |  | 70% → 100% |  | baseline start none → 2016-09-23; baseline finish none → 2016-09-26 |
| 27 | **Desenvolvimento Back End** | 2016-09-30 → 2016-09-24 A (-6d) | 2016-11-18 → 2016-11-23 (+5d) | 36d → 44d | 0% → 2% |  | baseline start none → 2016-09-30; baseline finish none → 2016-11-30 |
| 28 | Home Super Admin | 2016-10-06 → 2016-09-24 (-12d) | 2016-10-09 → 2016-10-10 (+1d) | 3d → 12d |  |  | baseline start none → 2016-10-06; baseline finish none → 2016-10-21 |
| 29 | Login | 2016-10-02 → 2016-09-24 (-8d) | 2016-10-03 → 2016-09-29 (-4d) | 2d → 5d |  |  | baseline start none → 2016-10-24; baseline finish none → 2016-10-28 |
| 30 | Assinatura | 2016-10-03 → 2016-09-24 (-9d) | 2016-10-06 → 2016-09-29 (-7d) | 4d → 5d |  |  | baseline start none → 2016-10-31; baseline finish none → 2016-11-04 |
| 31 | Cadastrar Crédito Cliente | 2016-10-10 → 2016-09-24 (-16d) | 2016-10-16 → 2016-09-30 (-16d) |  |  |  | baseline start none → 2016-10-14; baseline finish none → 2016-10-21 |
| 32 | Relatório Vendas | 2016-10-10 → 2016-09-24 (-16d) | 2016-10-16 → 2016-09-30 (-16d) |  |  |  | baseline start none → 2016-10-14; baseline finish none → 2016-10-21 |
| 33 | Venda | 2016-10-10 → 2016-09-24 (-16d) | 2016-10-16 → 2016-09-30 (-16d) |  |  |  | baseline start none → 2016-10-14; baseline finish none → 2016-10-21 |
| 34 | Home Funcionário | 2016-10-06 → 2016-09-24 (-12d) | 2016-10-09 → 2016-09-29 (-10d) | 3d → 5d |  |  | baseline start none → 2016-11-07; baseline finish none → 2016-11-11 |
| 35 | Home Gerente | 2016-10-06 → 2016-09-24 (-12d) | 2016-10-09 → 2016-09-27 (-12d) |  |  |  | baseline start none → 2016-11-14; baseline finish none → 2016-11-16 |
| 36 | Relatório Cliente | 2016-10-10 → 2016-09-24 (-16d) | 2016-10-16 → 2016-09-29 (-17d) | 6d → 5d |  |  | baseline start none → 2016-11-16; baseline finish none → 2016-11-22 |
| 37 | Cadastro Rede | 2016-10-10 A | 2016-10-16 → 2016-10-17 (+1d) |  | 0% → 45% |  | resources Luis Mauro → Luis Mauro; Marcos; baseline start none → 2016-10-10; baseline finish none → 2016-10-16 |
| 38 | Caixa Final | 2016-10-10 → 2016-09-24 (-16d) | 2016-10-16 → 2016-10-13 (-3d) | 6d → 15d |  |  | baseline start none → 2016-10-10; baseline finish none → 2016-10-28 |
| 39 | Estoque | 2016-10-17 → 2016-09-24 (-23d) | 2016-10-20 → 2016-09-30 (-20d) | 4d → 6d |  |  | baseline start none → 2016-10-18; baseline finish none → 2016-10-25 |
| 40 | Relatório Medicamento | 2016-10-17 → 2016-09-24 (-23d) | 2016-10-20 → 2016-09-28 (-22d) |  |  |  | baseline start none → 2016-11-17; baseline finish none → 2016-11-22 |
| 41 | Listar Medicamentos | 2016-10-20 → 2016-09-24 (-26d) | 2016-10-23 → 2016-09-27 (-26d) |  |  |  | baseline start none → 2016-11-23; baseline finish none → 2016-11-25 |
| 42 | Listar Funcionários | 2016-10-20 → 2016-09-24 (-26d) | 2016-10-23 → 2016-09-28 (-25d) | 3d → 4d |  |  | baseline start none → 2016-10-26; baseline finish none → 2016-10-31 |
| 43 | Listar Lojas | 2016-10-23 → 2016-09-24 (-29d) | 2016-10-25 → 2016-09-28 (-27d) | 3d → 4d |  |  | baseline start none → 2016-11-01; baseline finish none → 2016-11-04 |
| 44 | Cadastrar Medicamentos | 2016-10-23 → 2016-09-24 (-29d) | 2016-10-25 → 2016-09-27 (-28d) |  |  |  | baseline start none → 2016-11-26; baseline finish none → 2016-11-29 |
| 45 | Cadastrar Funcionário Admin | 2016-10-26 → 2016-09-24 (-32d) | 2016-10-30 → 2016-09-26 (-34d) | 4d → 2d |  |  | baseline start none → 2016-11-29; baseline finish none → 2016-11-30 |
| 46 | Cadastrar Fornecedor | 2016-10-26 → 2016-09-24 (-32d) | 2016-10-30 → 2016-09-28 (-32d) |  |  |  | baseline start none → 2016-11-07; baseline finish none → 2016-11-10 |
| 47 | Cadastrar Loja | 2016-11-02 → 2016-09-24 (-39d) | 2016-11-06 → 2016-09-30 (-37d) | 4d → 6d |  |  | resources Marcos → Luis; baseline start none → 2016-11-23; baseline finish none → 2016-11-30 |
| 48 | Cadastrar Cliente | 2016-10-03 → 2016-09-24 (-9d) | 2016-10-09 → 2016-10-06 (-3d) | 6d → 10d |  |  | baseline start none → 2016-10-24; baseline finish none → 2016-11-04 |
| 49 | Cadastrar Cliente Admin | 2016-10-03 → 2016-09-24 (-9d) | 2016-10-09 → 2016-10-06 (-3d) | 6d → 10d |  |  | baseline start none → 2016-10-24; baseline finish none → 2016-11-04 |
| 50 | Cadastrar Funcionário | 2016-10-03 → 2016-09-24 (-9d) | 2016-10-09 → 2016-10-06 (-3d) | 6d → 10d |  |  | baseline start none → 2016-10-24; baseline finish none → 2016-11-04 |
| 51 | Cadastrar Tipo | 2016-10-03 → 2016-09-24 (-9d) | 2016-10-09 → 2016-10-06 (-3d) | 6d → 10d |  |  | resources Luis → Everton; baseline start none → 2016-11-05; baseline finish none → 2016-11-17 |
| 52 | Pagina Institucional - Index | 2016-11-08 → 2016-09-24 (-45d) | 2016-11-11 → 2016-10-14 (-28d) | 4d → 16d |  |  | resources Marcos → Pedro; baseline start none → 2016-10-28; baseline finish none → 2016-11-18 |
