# Simple Project Plan

How a schedule from MS Project changed from version to version. A marks actual dates.

## Version 1 (saved 2016-10-13, file Cronograma.mpp)

Note of the change: arrumando pastas

| ID | WBS | Task | Duration | Start | Finish | Predecessors | Complete |
| --- | --- | --- | --- | --- | --- | --- | --- |
| 1 | 1 | **Desenvolvimento Front End** | 5d | 2016-09-23 A | 2016-09-29 |  | 97% |
| 2 |  | Home Super Admin | 2d | 2016-09-23 A | 2016-09-26 A |  | 100% |
| 3 |  | Login | 3d | 2016-09-27 A | 2016-09-29 A | 2 | 100% |
| 4 |  | Assinatura | 0d | 2016-09-30 A | 2016-09-30 A | 3 | 100% |
| 5 |  | Cadastrar Crédito Cliente | 1.18d | 2016-09-23 A | 2016-09-26 A |  | 100% |
| 6 |  | Relatório Vendas | 1.18d | 2016-09-23 A | 2016-09-26 A |  | 100% |
| 7 |  | Venda | 1.18d | 2016-09-23 A | 2016-09-26 A |  | 100% |
| 8 |  | Home Funcionário | 1.18d | 2016-09-23 A | 2016-09-26 A |  | 100% |
| 9 |  | Home Gerente | 1.18d | 2016-09-23 A | 2016-09-26 A |  | 100% |
| 10 |  | Relatório Cliente | 1.18d | 2016-09-23 A | 2016-09-26 A |  | 100% |
| 11 |  | Cadastro Rede | 1.18d | 2016-09-23 A | 2016-09-26 A |  | 100% |
| 12 |  | Caixa Final | 1.18d | 2016-09-23 A | 2016-09-26 A |  | 100% |
| 13 |  | Estoque | 1.18d | 2016-09-23 A | 2016-09-26 A |  | 100% |
| 14 |  | Relatório Medicamento | 1.18d | 2016-09-23 A | 2016-09-26 A |  | 100% |
| 15 |  | Listar Medicamentos | 1.18d | 2016-09-23 A | 2016-09-26 A |  | 100% |
| 16 |  | Listar Funcionários | 1.18d | 2016-09-23 A | 2016-09-26 |  | 70% |
| 17 |  | Listar Lojas | 1.18d | 2016-09-23 A | 2016-09-26 A |  | 100% |
| 18 |  | Cadastrar Medicamentos | 1.18d | 2016-09-23 A | 2016-09-26 A |  | 100% |
| 19 |  | Cadastrar Funcionário Admin | 1.18d | 2016-09-23 A | 2016-09-26 A |  | 100% |
| 20 |  | Cadastrar Fornecedor | 1.18d | 2016-09-23 A | 2016-09-26 A |  | 100% |
| 21 |  | Cadastrar Loja | 1.18d | 2016-09-23 A | 2016-09-26 A |  | 100% |
| 22 |  | Cadastrar Cliente | 1.18d | 2016-09-23 A | 2016-09-26 |  | 70% |
| 23 |  | Cadastrar Cliente Admin | 1.18d | 2016-09-23 A | 2016-09-26 A |  | 100% |
| 24 |  | Cadastrar Funcionário | 1.18d | 2016-09-23 A | 2016-09-26 |  | 70% |
| 25 |  | Cadastrar Tipo | 1.18d | 2016-09-23 A | 2016-09-26 A |  | 100% |
| 26 |  | Pagina Institucional - Index | 1.18d | 2016-09-23 A | 2016-09-26 A |  | 100% |
| 27 | 2 | **Desenvolvimento Back End** | 44d | 2016-09-30 | 2016-11-30 |  | 5% |
| 28 |  | Home Super Admin | 12d | 2016-10-06 A | 2016-10-21 |  | 20% |
| 29 |  | Login | 5d | 2016-10-24 | 2016-10-28 |  |  |
| 30 |  | Assinatura | 5d | 2016-10-31 A | 2016-11-04 |  | 24% |
| 31 |  | Cadastrar Crédito Cliente | 6d | 2016-10-14 | 2016-10-21 |  |  |
| 32 |  | Relatório Vendas | 6d | 2016-10-14 | 2016-10-21 |  |  |
| 33 |  | Venda | 6d | 2016-10-14 | 2016-10-21 |  |  |
| 34 |  | Home Funcionário | 5d | 2016-11-07 | 2016-11-11 |  |  |
| 35 |  | Home Gerente | 3d | 2016-11-14 | 2016-11-16 |  |  |
| 36 |  | Relatório Cliente | 5d | 2016-11-16 | 2016-11-22 |  |  |
| 37 |  | Cadastro Rede | 6d | 2016-10-10 A | 2016-10-16 |  | 25% |
| 38 |  | Caixa Final | 15d | 2016-10-10 A | 2016-10-28 |  | 10% |
| 39 |  | Estoque | 6d | 2016-10-18 | 2016-10-25 |  |  |
| 40 |  | Relatório Medicamento | 4d | 2016-11-17 | 2016-11-22 |  |  |
| 41 |  | Listar Medicamentos | 3d | 2016-11-23 | 2016-11-25 |  |  |
| 42 |  | Listar Funcionários | 4d | 2016-10-26 | 2016-10-31 |  |  |
| 43 |  | Listar Lojas | 4d | 2016-11-01 | 2016-11-04 |  |  |
| 44 |  | Cadastrar Medicamentos | 3d | 2016-11-26 | 2016-11-29 |  |  |
| 45 |  | Cadastrar Funcionário Admin | 2d | 2016-11-29 | 2016-11-30 |  |  |
| 46 |  | Cadastrar Fornecedor | 4d | 2016-11-07 | 2016-11-10 |  |  |
| 47 |  | Cadastrar Loja | 6d | 2016-11-23 | 2016-11-30 |  |  |
| 48 |  | Cadastrar Cliente | 10d | 2016-10-24 | 2016-11-04 |  |  |
| 49 |  | Cadastrar Cliente Admin | 10d | 2016-10-24 | 2016-11-04 |  |  |
| 50 |  | Cadastrar Funcionário | 10d | 2016-10-24 | 2016-11-04 |  |  |
| 51 |  | Cadastrar Tipo | 10d | 2016-11-05 | 2016-11-17 |  |  |
| 52 |  | Pagina Institucional - Index | 16d | 2016-10-28 A | 2016-11-18 |  | 8% |

## Version 2 (saved 2016-10-28, file Cronograma28-10-2016.mpp)

Note of the change: Atualização Cronograma e desenvolvimmento Back-end

Last finish 2016-11-30 → 2016-11-23 (-7d). Complete tasks 22 → 25.

Changed:

| ID | Task | Start | Finish | Complete | Other |
| --- | --- | --- | --- | --- | --- |
| 1 | **Desenvolvimento Front End** |  |  | 97% → 100% |  |
| 16 | Listar Funcionários |  | 2016-09-26 A | 70% → 100% |  |
| 22 | Cadastrar Cliente |  | 2016-09-26 A | 70% → 100% |  |
| 24 | Cadastrar Funcionário |  | 2016-09-26 A | 70% → 100% |  |
| 27 | **Desenvolvimento Back End** | 2016-09-30 → 2016-09-24 A (-6d) | 2016-11-30 → 2016-11-23 (-7d) | 5% → 2% |  |
| 28 | Home Super Admin | 2016-10-06 A → 2016-09-24 (-12d) | 2016-10-21 → 2016-10-10 (-11d) | 20% → 0% |  |
| 29 | Login | 2016-10-24 → 2016-09-24 (-30d) | 2016-10-28 → 2016-09-29 (-29d) |  |  |
| 30 | Assinatura | 2016-10-31 A → 2016-09-24 (-37d) | 2016-11-04 → 2016-09-29 (-36d) | 24% → 0% |  |
| 31 | Cadastrar Crédito Cliente | 2016-10-14 → 2016-09-24 (-20d) | 2016-10-21 → 2016-09-30 (-21d) |  |  |
| 32 | Relatório Vendas | 2016-10-14 → 2016-09-24 (-20d) | 2016-10-21 → 2016-09-30 (-21d) |  |  |
| 33 | Venda | 2016-10-14 → 2016-09-24 (-20d) | 2016-10-21 → 2016-09-30 (-21d) |  |  |
| 34 | Home Funcionário | 2016-11-07 → 2016-09-24 (-44d) | 2016-11-11 → 2016-09-29 (-43d) |  |  |
| 35 | Home Gerente | 2016-11-14 → 2016-09-24 (-51d) | 2016-11-16 → 2016-09-27 (-50d) |  |  |
| 36 | Relatório Cliente | 2016-11-16 → 2016-09-24 (-53d) | 2016-11-22 → 2016-09-29 (-54d) |  |  |
| 37 | Cadastro Rede |  | 2016-10-16 → 2016-10-17 (+1d) | 25% → 45% | resources Luis Mauro → Luis Mauro; Marcos |
| 38 | Caixa Final | 2016-10-10 A → 2016-09-24 (-16d) | 2016-10-28 → 2016-10-13 (-15d) | 10% → 0% |  |
| 39 | Estoque | 2016-10-18 → 2016-09-24 (-24d) | 2016-10-25 → 2016-09-30 (-25d) |  |  |
| 40 | Relatório Medicamento | 2016-11-17 → 2016-09-24 (-54d) | 2016-11-22 → 2016-09-28 (-55d) |  |  |
| 41 | Listar Medicamentos | 2016-11-23 → 2016-09-24 (-60d) | 2016-11-25 → 2016-09-27 (-59d) |  |  |
| 42 | Listar Funcionários | 2016-10-26 → 2016-09-24 (-32d) | 2016-10-31 → 2016-09-28 (-33d) |  |  |
| 43 | Listar Lojas | 2016-11-01 → 2016-09-24 (-38d) | 2016-11-04 → 2016-09-28 (-37d) |  |  |
| 44 | Cadastrar Medicamentos | 2016-11-26 → 2016-09-24 (-63d) | 2016-11-29 → 2016-09-27 (-63d) |  |  |
| 45 | Cadastrar Funcionário Admin | 2016-11-29 → 2016-09-24 (-66d) | 2016-11-30 → 2016-09-26 (-65d) |  |  |
| 46 | Cadastrar Fornecedor | 2016-11-07 → 2016-09-24 (-44d) | 2016-11-10 → 2016-09-28 (-43d) |  |  |
| 47 | Cadastrar Loja | 2016-11-23 → 2016-09-24 (-60d) | 2016-11-30 → 2016-09-30 (-61d) |  |  |
| 48 | Cadastrar Cliente | 2016-10-24 → 2016-09-24 (-30d) | 2016-11-04 → 2016-10-06 (-29d) |  |  |
| 49 | Cadastrar Cliente Admin | 2016-10-24 → 2016-09-24 (-30d) | 2016-11-04 → 2016-10-06 (-29d) |  |  |
| 50 | Cadastrar Funcionário | 2016-10-24 → 2016-09-24 (-30d) | 2016-11-04 → 2016-10-06 (-29d) |  |  |
| 51 | Cadastrar Tipo | 2016-11-05 → 2016-09-24 (-42d) | 2016-11-17 → 2016-10-06 (-42d) |  |  |
| 52 | Pagina Institucional - Index | 2016-10-28 A → 2016-09-24 (-34d) | 2016-11-18 → 2016-10-14 (-35d) | 8% → 0% |  |

## Version 3 (saved 2016-11-04, file Cronograma04-11-2016.mpp)

Note of the change: Atualização Cronograma e desenvolvimmento Back-end

Last finish stays 2016-11-23. Complete tasks 25 → 27.

Changed:

| ID | Task | Start | Finish | Duration | Complete | Other |
| --- | --- | --- | --- | --- | --- | --- |
| 27 | **Desenvolvimento Back End** |  |  |  | 2% → 16% |  |
| 30 | Assinatura | 2016-09-24 → 2016-11-01 A (+38d) | 2016-09-29 → 2016-11-03 A (+35d) | 5d → 3d | 0% → 100% |  |
| 37 | Cadastro Rede |  | 2016-10-17 → 2016-11-03 A (+17d) | 6d → 19d | 45% → 100% |  |
| 48 | Cadastrar Cliente | 2016-09-24 → 2016-10-28 A (+34d) | 2016-10-06 → 2016-11-04 (+29d) | 10d → 6d | 0% → 95% | resources Everton → Marcos |

## Version 4 (saved 2016-11-11, file Cronograma11-11-2016.mpp)

Note of the change: Cronograma e Burn Down

Last finish 2016-11-23 → 2016-11-24 (+1d). Complete tasks 27 → 28.

Changed:

| ID | Task | Start | Finish | Complete | Other |
| --- | --- | --- | --- | --- | --- |
| 27 | **Desenvolvimento Back End** |  |  | 16% → 23% |  |
| 28 | Home Super Admin | 2016-09-24 → 2016-11-05 A (+42d) | 2016-10-10 → 2016-11-21 (+42d) | 0% → 25% |  |
| 29 | Login | 2016-09-24 → 2016-11-05 A (+42d) | 2016-09-29 → 2016-11-10 (+42d) | 0% → 50% |  |
| 31 | Cadastrar Crédito Cliente | 2016-09-24 → 2016-11-05 A (+42d) | 2016-09-30 → 2016-11-11 (+42d) | 0% → 10% |  |
| 32 | Relatório Vendas | 2016-09-24 → 2016-11-05 A (+42d) | 2016-09-30 → 2016-11-11 (+42d) | 0% → 10% |  |
| 33 | Venda | 2016-09-24 → 2016-11-05 A (+42d) | 2016-09-30 → 2016-11-11 (+42d) | 0% → 20% |  |
| 36 | Relatório Cliente | 2016-09-24 → 2016-11-05 A (+42d) | 2016-09-29 → 2016-11-10 (+42d) | 0% → 15% |  |
| 38 | Caixa Final | 2016-09-24 → 2016-11-05 A (+42d) | 2016-10-13 → 2016-11-24 (+42d) | 0% → 5% |  |
| 39 | Estoque | 2016-09-24 → 2016-11-05 A (+42d) | 2016-09-30 → 2016-11-11 (+42d) | 0% → 50% |  |
| 45 | Cadastrar Funcionário Admin | 2016-09-24 → 2016-11-05 (+42d) | 2016-09-26 → 2016-11-07 (+42d) |  | resources Marcos → Luis |
| 48 | Cadastrar Cliente |  | 2016-11-04 A | 95% → 100% |  |
